# 智维集控平台

Schedule from a web Gantt chart, 2026-06-08 to 2026-10-10.
Every day is a working day

## Schedule

| ID | WBS | Task | Duration | Start | Finish | Predecessors | Status |
| --- | --- | --- | --- | --- | --- | --- | --- |
| 2 | 1 | **平台基础能力** | 11d | 2026-06-08 | 2026-06-18 |  |  |
| 3 | 1.1 | 数据权限管理 | 2d | 2026-06-08 | 2026-06-09 |  |  |
| 4 | 1.2 | 租户管理 | 2d | 2026-06-10 | 2026-06-11 | 3 | waiting |
| 5 | 1.3 | 国际化 | 2d | 2026-06-12 | 2026-06-13 | 4 | waiting |
| 6 | 1.4 | 组织权限管理 | 3d | 2026-06-14 | 2026-06-16 | 5 | waiting |
| 7 | 1.5 | 审计日志 | 2d | 2026-06-17 | 2026-06-18 | 6 | waiting |
| 8 | 2 | **3.6.6 配置管理优化与电站快速接入能力建设** | 24d | 2026-06-19 | 2026-07-12 |  |  |
| 9 | 2.1 | 场站管理 | 2d | 2026-06-19 | 2026-06-20 | 2 | waiting |
| 10 | 2.2 | 设备类型管理 | 1d | 2026-06-21 | 2026-06-21 | 9 | waiting |
| 11 | 2.3 | 设备型号管理 | 1d | 2026-06-22 | 2026-06-22 | 10 | waiting |
| 12 | 2.4 | 设备管理 | 2d | 2026-06-23 | 2026-06-24 | 11 | waiting |
| 13 | 2.5 | 测点管理 | 2d | 2026-07-01 | 2026-07-02 | 21 | waiting |
| 14 | 2.6 | 测点物模型映射配置 | 2d | 2026-07-03 | 2026-07-04 | 13 | waiting |
| 15 | 2.7 | 测点计算规则配置 | 2d | 2026-07-05 | 2026-07-06 | 14 | waiting |
| 16 | 2.8 | 告警规则配置 | 1d | 2026-07-07 | 2026-07-07 | 15 | waiting |
| 17 | 2.9 | 告警屏蔽管理 | 1d | 2026-07-08 | 2026-07-08 | 16 | waiting |
| 18 | 2.10 | 告警通知管理 | 2d | 2026-07-09 | 2026-07-10 | 17 | waiting |
| 19 | 2.11 | 数据清洗规则管理 | 1d | 2026-07-11 | 2026-07-11 | 18 | waiting |
| 20 | 2.12 | 数据补录规则管理 | 1d | 2026-07-12 | 2026-07-12 | 19 | waiting |
| 21 | 3 | **3.5.1 一体化驾驶舱指标体系梳理** | 6d | 2026-06-25 | 2026-06-30 |  |  |
| 22 | 3.1 | 指标管理 | 1d | 2026-06-25 | 2026-06-25 | 12 | waiting |
| 23 | 3.2 | 物模型管理 | 5d | 2026-06-26 | 2026-06-30 | 22 | waiting |
| 24 | 4 | **3.5.3 一体化驾驶舱指标数据计算引擎开发** | 13d | 2026-07-16 | 2026-07-28 |  |  |
| 25 | 4.1 | 实时/历史流数据处理引擎 | 5d | 2026-07-16 | 2026-07-20 | 120 | waiting |
| 26 | 4.2 | 数据清洗服务 | 1d | 2026-07-21 | 2026-07-21 | 25 | waiting |
| 27 | 4.3 | 告警计算服务器 | 1d | 2026-07-22 | 2026-07-22 | 26 | waiting |
| 28 | 4.4 | 计算规则引擎 | 2d | 2026-07-23 | 2026-07-24 | 27 | waiting |
| 29 | 4.5 | 数据存储服务 | 1d | 2026-07-26 | 2026-07-26 | 28, 31 | waiting |
| 30 | 4.6 | 缓存同步服务 | 2d | 2026-07-27 | 2026-07-28 | 29 | waiting |
| 31 | 5 | 3.6.3 时序数据库与采集数据存储架构优化 | 1d | 2026-07-25 | 2026-07-25 | 28 | waiting |

| ID | WBS | Task | Duration | Start | Finish | Predecessors | Status |
| --- | --- | --- | --- | --- | --- | --- | --- |
| 32 | 6 | **3.3 一体化驾驶舱专业视图板块** | 24d | 2026-07-29 | 2026-08-21 |  |  |
| 33 | 6.1 | 告警管理 | 2d | 2026-07-29 | 2026-07-30 | 24 | waiting |
| 34 | 6.2 | 混合能源类型场站概览 | 2d | 2026-07-31 | 2026-08-01 | 33 | waiting |
| 35 | 6.3 | 光伏场站概览 | 1d | 2026-08-02 | 2026-08-02 | 34 | waiting |
| 36 | 6.4 | 逆变器状态监视 | 1d | 2026-08-03 | 2026-08-03 | 35 | waiting |
| 37 | 6.5 | 设备发电监视 | 1d | 2026-08-04 | 2026-08-04 | 36 | waiting |
| 38 | 6.6 | 升压站监视 | 1d | 2026-08-05 | 2026-08-05 | 37 | waiting |
| 39 | 6.7 | 集电线路监视 | 1d | 2026-08-06 | 2026-08-06 | 38 | waiting |
| 40 | 6.8 | 箱变监视 | 1d | 2026-08-07 | 2026-08-07 | 39 | waiting |
| 41 | 6.9 | 逆变器监视 | 1d | 2026-08-08 | 2026-08-08 | 40 | waiting |
| 42 | 6.10 | 气象站监视 | 1d | 2026-08-09 | 2026-08-09 | 41 | waiting |
| 43 | 6.11 | 电表监视 | 1d | 2026-08-10 | 2026-08-10 | 42 | waiting |
| 44 | 6.12 | 其他设备监视 | 1d | 2026-08-11 | 2026-08-11 | 43 | waiting |
| 45 | 6.13 | 光伏场站概览 | 1d | 2026-08-12 | 2026-08-12 | 44 | waiting |
| 46 | 6.14 | 风机状态监视 | 1d | 2026-08-13 | 2026-08-13 | 45 | waiting |
| 47 | 6.15 | 测风塔监视 | 1d | 2026-08-14 | 2026-08-14 | 46 | waiting |
| 48 | 6.16 | 储能电站概览 | 1d | 2026-08-15 | 2026-08-15 | 47 | waiting |
| 49 | 6.17 | 储能单元监视 | 1d | 2026-08-16 | 2026-08-16 | 48 | waiting |
| 50 | 6.18 | PCS监视 | 1d | 2026-08-17 | 2026-08-17 | 49 | waiting |
| 51 | 6.19 | 电池堆监视 | 1d | 2026-08-18 | 2026-08-18 | 50 | waiting |
| 52 | 6.20 | 电池簇监视 | 1d | 2026-08-19 | 2026-08-19 | 51 | waiting |
| 53 | 6.21 | 电池包监视 | 1d | 2026-08-20 | 2026-08-20 | 52 | waiting |
| 54 | 6.22 | 电芯监视 | 1d | 2026-08-21 | 2026-08-21 | 53 | waiting |
| 55 | 7 | **3.1.5 智慧场站门户** | 7d | 2026-08-03 | 2026-08-09 |  |  |
| 56 | 7.1 | 场站总览 | 1d | 2026-08-03 | 2026-08-03 | 35 | waiting |
| 57 | 7.2 | 区域总览 | 1d | 2026-08-04 | 2026-08-04 | 56 | waiting |
| 58 | 7.3 | 样板电站视图 | 1d | 2026-08-05 | 2026-08-05 | 57 | waiting |
| 59 | 7.4 | 标杆电站视图 | 1d | 2026-08-06 | 2026-08-06 | 58 | waiting |
| 60 | 7.5 | 低发电绩效视图 | 1d | 2026-08-07 | 2026-08-07 | 59 | waiting |
| 61 | 7.6 | 低并网消纳视图 | 1d | 2026-08-08 | 2026-08-08 | 60 | waiting |
| 62 | 7.7 | 高风险电站视图 | 1d | 2026-08-09 | 2026-08-09 | 61 | waiting |

| ID | WBS | Task | Duration | Start | Finish | Predecessors | Status |
| --- | --- | --- | --- | --- | --- | --- | --- |
| 63 | 8 | **3.6.1 风光储一体化数据结构与档案体系升级** | 7d | 2026-07-12 | 2026-07-18 |  |  |
| 64 | 8.1 | 公司档案迁移 | 1d | 2026-07-12 | 2026-07-12 | 19 | waiting |
| 65 | 8.2 | 型号档案迁移 | 1d | 2026-07-13 | 2026-07-13 | 64 | waiting |
| 66 | 8.3 | 设备分类迁移 | 1d | 2026-07-14 | 2026-07-14 | 65 | waiting |
| 67 | 8.4 | 设备档案迁移 | 1d | 2026-07-15 | 2026-07-15 | 66 | waiting |
| 68 | 8.5 | 电站档案迁移 | 1d | 2026-07-16 | 2026-07-16 | 67 | waiting |
| 69 | 8.6 | 测点配置迁移 | 2d | 2026-07-17 | 2026-07-18 | 68 | waiting |
| 70 | 9 | **3.6.4 原有光伏电站历史数据迁移实施** | 5d | 2026-07-19 | 2026-07-23 |  |  |
| 71 | 9.1 | 实时数据迁移 | 3d | 2026-07-19 | 2026-07-21 | 69 | waiting |
| 72 | 9.2 | 统计数据迁移 | 2d | 2026-07-22 | 2026-07-23 | 71 | waiting |
| 73 | 10 | **3.6.2 风光储统一运维功能迁移** | 30d | 2026-07-24 | 2026-08-22 |  |  |
| 74 | 10.1 | 运行日志数据迁移和查询功能开发 | 2d | 2026-07-24 | 2026-07-25 | 72 | waiting |
| 75 | 10.2 | 缺陷单数据迁移与查询功能开发 | 2d | 2026-07-26 | 2026-07-27 | 74 | waiting |
| 76 | 10.3 | 检修预试数据迁移与查询功能开发 | 2d | 2026-07-28 | 2026-07-29 | 75 | waiting |
| 77 | 10.4 | 巡检数据迁移与查询功能开发 | 2d | 2026-07-30 | 2026-07-31 | 76 | waiting |
| 78 | 10.5 | 抢修单数据迁移与查询功能开发 | 2d | 2026-08-01 | 2026-08-02 | 77 | waiting |
| 79 | 10.6 | 典型工作票数据迁移与查询功能开发 | 2d | 2026-08-03 | 2026-08-04 | 78 | waiting |
| 80 | 10.7 | 正式工作牌数据迁移与查询功能开发 | 2d | 2026-08-05 | 2026-08-06 | 79 | waiting |
| 81 | 10.8 | 典型操作票数据迁移与查询功能开发 | 2d | 2026-08-07 | 2026-08-08 | 80 | waiting |
| 82 | 10.9 | 正式操作票数据迁移与查询功能开发 | 2d | 2026-08-09 | 2026-08-10 | 81 | waiting |
| 83 | 10.10 | 备品备件规格数据迁移与查询功能开发 | 2d | 2026-08-11 | 2026-08-12 | 82 | waiting |
| 84 | 10.11 | 仓库数据迁移与查询功能开发 | 2d | 2026-08-13 | 2026-08-14 | 83 | waiting |
| 85 | 10.12 | 库存数据迁移与查询功能开发 | 2d | 2026-08-15 | 2026-08-16 | 84 | waiting |
| 86 | 10.13 | 出入库数据迁移与查询功能开发 | 2d | 2026-08-17 | 2026-08-18 | 85 | waiting |
| 87 | 10.14 | 库存盘点数据迁移与查询功能开发 | 2d | 2026-08-19 | 2026-08-20 | 86 | waiting |
| 88 | 10.15 | 运维文档数据迁移与查询功能开发 | 2d | 2026-08-21 | 2026-08-22 | 87 | waiting |

| ID | WBS | Task | Duration | Start | Finish | Predecessors | Status |
| --- | --- | --- | --- | --- | --- | --- | --- |
| 89 | 11 | **3.7.1 智慧场站档案资料数据接入** | 6d | 2026-07-19 | 2026-07-24 |  |  |
| 90 | 11.1 | 电站数据同步接口 | 1d | 2026-07-19 | 2026-07-19 | 69 | waiting |
| 91 | 11.2 | 设备类型数据同步接口 | 1d | 2026-07-20 | 2026-07-20 | 90 | waiting |
| 92 | 11.3 | 型号数据同步接口 | 1d | 2026-07-21 | 2026-07-21 | 91 | waiting |
| 93 | 11.4 | 设备数据同步接口 | 1d | 2026-07-22 | 2026-07-22 | 92 | waiting |
| 94 | 11.5 | 同步任务管理和失败重试功能开发 | 2d | 2026-07-23 | 2026-07-24 | 93 | waiting |
| 95 | 12 | **3.7.2 智慧场站运行监测类数据接入** | 6d | 2026-07-25 | 2026-07-30 |  |  |
| 96 | 12.1 | 设备运行数据接口 | 2d | 2026-07-25 | 2026-07-26 | 94 | waiting |
| 97 | 12.2 | 电站运行数据接口 | 2d | 2026-07-27 | 2026-07-28 | 96 | waiting |
| 98 | 12.3 | 事件数据接口 | 2d | 2026-07-29 | 2026-07-30 | 97 | waiting |
| 99 | 13 | 3.7.3 智慧场站系统参数类数据接入与同步建设 | 2d | 2026-07-31 | 2026-08-01 | 98 | waiting |
| 100 | 14 | **3.6.5 面向一体化驾驶舱的集成适配开发** | 8d | 2026-08-22 | 2026-08-29 |  |  |
| 101 | 14.1 | 档案数据查询集成 | 2d | 2026-08-22 | 2026-08-23 | 54 | waiting |
| 102 | 14.2 | 实时运行数据集成 | 2d | 2026-08-24 | 2026-08-25 | 101 | waiting |
| 103 | 14.3 | 历史运行数据集成 | 2d | 2026-08-26 | 2026-08-27 | 102 | waiting |
| 104 | 14.4 | 统计数据集成 | 2d | 2026-08-28 | 2026-08-29 | 103 | waiting |
| 105 | 15 | **3.5.2 一体化驾驶舱指标数据集市设计开发** | 8d | 2026-08-30 | 2026-09-06 |  |  |
| 106 | 15.1 | 档案类数据集市 | 2d | 2026-08-30 | 2026-08-31 | 104 | waiting |
| 107 | 15.2 | 运行类数据集市 | 2d | 2026-09-01 | 2026-09-02 | 106 | waiting |
| 108 | 15.3 | 数据集市指标管理 | 2d | 2026-09-03 | 2026-09-04 | 107 | waiting |
| 109 | 15.4 | 数据集市计算任务管理 | 2d | 2026-09-05 | 2026-09-06 | 108 | waiting |
| 110 | 16 | **3.5.4 一体化驾驶舱指标数据服务接口** | 8d | 2026-09-07 | 2026-09-14 |  |  |
| 111 | 16.1 | 指标查询接口 | 2d | 2026-09-07 | 2026-09-08 | 109 | waiting |
| 112 | 16.2 | 趋势分析接口 | 1d | 2026-09-09 | 2026-09-09 | 111 | waiting |
| 113 | 16.3 | 排行接口 | 1d | 2026-09-10 | 2026-09-10 | 112 | waiting |
| 114 | 16.4 | 明细接口 | 1d | 2026-09-11 | 2026-09-11 | 113 | waiting |
| 115 | 16.5 | 对象接口 | 1d | 2026-09-12 | 2026-09-12 | 114 | waiting |
| 116 | 16.6 | 证据接口 | 1d | 2026-09-13 | 2026-09-13 | 115 | waiting |
| 117 | 16.7 | 筛选维度接口 | 1d | 2026-09-14 | 2026-09-14 | 116 | waiting |

| ID | WBS | Task | Duration | Start | Finish | Predecessors | Status |
| --- | --- | --- | --- | --- | --- | --- | --- |
| 118 | 17 | **3.5.5 一体化驾驶舱指标数据实施** | 10d | 2026-07-13 | 2026-07-22 |  |  |
| 119 | 17.1 | 指标配置加载 | 1d | 2026-07-13 | 2026-07-13 | 8 | waiting |
| 120 | 17.2 | 数据接入服务 | 2d | 2026-07-14 | 2026-07-15 | 119 | waiting |
| 121 | 17.3 | 历史数据补齐服务 | 4d | 2026-07-16 | 2026-07-19 | 4, 120 | waiting |
| 122 | 17.4 | 数据质量统计 | 3d | 2026-07-20 | 2026-07-22 | 121 | waiting |
| 123 | 18 | **3.1.1 展示汇报门户** | 7d | 2026-09-15 | 2026-09-21 |  |  |
| 124 | 18.1 | 宏观业务布局 | 1d | 2026-09-15 | 2026-09-15 | 32, 110, 118 | waiting |
| 125 | 18.2 | 业务规模与服务版图 | 1d | 2026-09-16 | 2026-09-16 | 124 | waiting |
| 126 | 18.3 | 实时运行与运营成果 | 1d | 2026-09-17 | 2026-09-17 | 125 | waiting |
| 127 | 18.4 | 数字能源体系与平台能力 | 1d | 2026-09-18 | 2026-09-18 | 126 | waiting |
| 128 | 18.5 | 电力交易与市场化运营能力 | 1d | 2026-09-19 | 2026-09-19 | 127 | waiting |
| 129 | 18.6 | 社会责任与绿色价值 | 1d | 2026-09-20 | 2026-09-20 | 128 | waiting |
| 130 | 18.7 | 未来战略与发展路线图 | 1d | 2026-09-21 | 2026-09-21 | 129 | waiting |
| 131 | 19 | **3.1.2 经营决策门户** | 12d | 2026-09-22 | 2026-10-03 |  |  |
| 132 | 19.1 | 资产经营全景 | 2d | 2026-09-22 | 2026-09-23 | 123 | waiting |
| 133 | 19.2 | 发电表现与能力释放 | 2d | 2026-09-24 | 2026-09-25 | 132 | waiting |
| 134 | 19.3 | 收入利润与现金回报 | 2d | 2026-09-26 | 2026-09-27 | 133 | waiting |
| 135 | 19.4 | 运维效率与价值支撑 | 2d | 2026-09-28 | 2026-09-29 | 134 | waiting |
| 136 | 19.5 | 客户经营与履约价值 | 2d | 2026-09-30 | 2026-10-01 | 135 | waiting |
| 137 | 19.6 | 市场收益与交易优化 | 2d | 2026-10-02 | 2026-10-03 | 136 | waiting |
| 138 | 20 | **3.1.3 运维管理门户** | 7d | 2026-10-04 | 2026-10-10 |  |  |
| 139 | 20.1 | 运维总览 | 1d | 2026-10-04 | 2026-10-04 | 131 | waiting |
| 140 | 20.2 | 运行状态摘要 | 1d | 2026-10-05 | 2026-10-05 | 139 | waiting |
| 141 | 20.3 | 告警与故障摘要 | 1d | 2026-10-06 | 2026-10-06 | 140 | waiting |
| 142 | 20.4 | 工单与巡检摘要 | 1d | 2026-10-07 | 2026-10-07 | 141 | waiting |
| 143 | 20.5 | 可靠性与损失摘要 | 1d | 2026-10-08 | 2026-10-08 | 142 | waiting |
| 144 | 20.6 | 效率与价值摘要 | 1d | 2026-10-09 | 2026-10-09 | 143 | waiting |
| 145 | 20.7 | 重点待办与下钻入口 | 1d | 2026-10-10 | 2026-10-10 | 144 | waiting |

| ID | WBS | Task | Duration | Start | Finish | Predecessors | Status |
| --- | --- | --- | --- | --- | --- | --- | --- |
| 146 | 21 | **3.1.4 电力交易门户** | 9d | 2026-07-29 | 2026-08-06 |  |  |
| 147 | 21.1 | 交易系统数据同步接口 | 5d | 2026-07-29 | 2026-08-02 | 24 | waiting |
| 148 | 21.2 | 交易规模总览 | 1d | 2026-08-03 | 2026-08-03 | 147 | waiting |
| 149 | 21.3 | 交易结构分析 | 1d | 2026-08-04 | 2026-08-04 | 148 | waiting |
| 150 | 21.4 | 市场价格监测 | 1d | 2026-08-05 | 2026-08-05 | 149 | waiting |
| 151 | 21.5 | 交易收益分析 | 1d | 2026-08-06 | 2026-08-06 | 150 | waiting |
| 152 | 21.6 | 风险与偏差控制 | 1d | 2026-08-06 | 2026-08-06 |  |  |
| 153 | 22 | 3.2.1 资产运营场景 | 1d | 2026-06-08 | 2026-06-08 |  |  |
| 154 | 23 | 3.2.2 运维执行场景 | 1d | 2026-06-08 | 2026-06-08 |  |  |
| 155 | 24 | 3.2.3 电力交易场景 | 1d | 2026-06-08 | 2026-06-08 |  |  |
| 156 | 25 | 3.2.4 客户价值场景 | 1d | 2026-06-08 | 2026-06-08 |  |  |
| 157 | 26 | 3.2.5 社会贡献场景 | 1d | 2026-06-08 | 2026-06-08 |  |  |
